# MH_RAM

How a schedule from MS Project changed from version to version. A marks actual dates.

## Version 1 (saved 2018-04-11, file RAM.mpp)

Note of the change: initial MPP file

| ID | WBS | Task | Duration | Start | Finish | Predecessors | Total float | Constraint |
| --- | --- | --- | --- | --- | --- | --- | --- | --- |
| 2 | 1 | **Project Initiation** | 43d | 2018-02-08 | 2018-04-06 |  |  |  |
| 3 |  | Setup project filing system | 7d | 2018-02-08 | 2018-02-16 |  | 54d |  |
| 4 |  | Project requirement gathering | 13d | 2018-02-08 | 2018-02-26 |  | 16d |  |
| 5 |  | Project risk tracker | 7d | 2018-02-27 | 2018-03-07 | 4 | 29d |  |
| 6 |  | Prepare WBS | 14d | 2018-02-27 | 2018-03-16 | 4 | 16d |  |
| 7 |  | Produce project plan document | 7d | 2018-03-17 | 2018-03-26 | 6 | 16d | start no earlier than 2018-03-17 |
| 8 |  | Review/Finalize project plan document | 1d | 2018-03-27 | 2018-03-27 | 7 | 16d |  |
| 9 |  | Produce quality plan | 7d | 2018-02-27 | 2018-03-07 | 4 | 32d |  |
| 10 |  | Review/Finalize quality plan | 1d | 2018-03-08 | 2018-03-08 | 9 | 32d |  |
| 11 |  | Produce User requirement specification | 3d | 2018-03-08 | 2018-03-12 | 5 | 29d |  |
| 12 |  | Review/Finalize User requirement specification | 1d | 2018-03-13 | 2018-03-13 | 11 | 29d |  |
| 13 |  | Produce Use Case Modelling survey report | 6d | 2018-03-28 | 2018-04-04 | 8 | 16d |  |
| 14 |  | Review/Finalize Use Case Modelling survey report | 1d | 2018-04-05 | 2018-04-05 | 13 | 16d |  |
| 15 |  | Produce User Interface Speficication | 7d | 2018-03-09 | 2018-03-17 | 10 | 32d |  |
| 16 |  | Review/Finalize User Interface Specification | 1d | 2018-03-19 | 2018-03-19 | 15 | 32d |  |
| 17 |  | Produce High Level Design Specification | 7d | 2018-03-14 | 2018-03-21 | 12 | 29d |  |
| 18 |  | Review/Finalize High Level Design Specification | 1d | 2018-03-22 | 2018-03-22 | 17 | 29d |  |
| 19 |  | Exploring AWS services | 14d? | 2018-02-27 | 2018-03-16 | 4 | 34d |  |
| 20 | 2 | **Build Prototype** | 16d | 2018-04-06 | 2018-04-27 |  |  |  |
| 21 |  | Prepare prototype | 14d | 2018-04-06 | 2018-04-25 |  | 3d |  |
| 22 |  | Test prototype | 2d | 2018-04-26 | 2018-04-27 | 21 | 3d |  |
| 23 |  | Produce Prototype Study Report | 3d | 2018-04-06 | 2018-04-10 | 14 | 16d |  |
| 24 |  | Review/Finalize Prototype Study Report | 1d | 2018-04-26 | 2018-04-26 | 21 | 4d |  |
| 25 | 3 | **Incorporate Audit Feedbacks** | 4d | 2018-04-27 | 2018-05-02 |  |  |  |
| 26 |  | Revised on Audit Comments | 2d | 2018-04-27 | 2018-04-30 |  |  |  |
| 27 |  | Prepare for presentation | 2d | 2018-05-01 | 2018-05-02 | 26 |  |  |
| 28 | 4 | **Analysis and Design Modelling (Increment 1)** | 1d | 2018-04-11 | 2018-04-11 |  |  |  |
| 29 |  | Identify Domain Objects/Attributes | 1d | 2018-04-11 | 2018-04-11 |  |  |  |
| 30 |  | Produce Class Diagram/Sequence Diagram | 1d | 2018-04-11 | 2018-04-11 |  |  |  |
| 31 |  | Produce Use Case Model Survey Report (Requirement) | 1d | 2018-04-11 | 2018-04-11 |  |  |  |
| 32 |  | Review/FinaliseUse Case Model Survey Report (Requirement) | 1d | 2018-04-11 | 2018-04-11 |  |  |  |
| 33 |  | Produce Use Case Model Survey Report (Analysis) | 1d | 2018-04-11 | 2018-04-11 |  |  |  |
| 34 |  | Review/FinaliseUse Case Model Survey Report (Analysis) | 1d | 2018-04-11 | 2018-04-11 |  |  |  |
| 35 |  | Define Object Associations | 1d | 2018-04-11 | 2018-04-11 |  |  |  |
| 36 |  | Produce Design Model Report | 1d | 2018-04-11 | 2018-04-11 |  |  |  |
| 37 |  | Review/FinaliseDesign Model Report | 1d | 2018-04-11 | 2018-04-11 |  |  |  |
| 38 | 5 | **Implementation & Coding** | 1d | 2018-04-11 | 2018-04-11 |  |  |  |
| 39 |  | Setup necessary cloud environment | 1d | 2018-04-11 | 2018-04-11 |  |  |  |
| 40 |  | Source control plan and setup | 1d | 2018-04-11 | 2018-04-11 |  |  |  |
| 41 |  | Backend coding | 1d? | 2018-04-11 | 2018-04-11 |  |  |  |
| 42 |  | Frontend coding | 1d | 2018-04-11 | 2018-04-11 |  |  |  |
| 43 |  | Unit testing | 1d | 2018-04-11 | 2018-04-11 |  |  |  |
| 44 |  | Peer review coding | 1d | 2018-04-11 | 2018-04-11 |  |  |  |
| 45 | 6 | **Testing** | 1d | 2018-04-11 | 2018-04-11 |  |  |  |
| 46 |  | Produce System Test Plan | 1d | 2018-04-11 | 2018-04-11 |  |  |  |
| 47 |  | Review/FinaliseSystem Test Plan | 1d | 2018-04-11 | 2018-04-11 |  |  |  |
| 48 |  | Perform System Testing | 1d | 2018-04-11 | 2018-04-11 |  |  |  |
| 49 |  | Bug Review/Corrective action/Rework | 1d | 2018-04-11 | 2018-04-11 |  |  |  |
| 50 |  | Prepare SIT Document | 1d | 2018-04-11 | 2018-04-11 |  |  |  |
| 51 |  | Review/FinaliseSIT Document | 1d | 2018-04-11 | 2018-04-11 |  |  |  |
| 52 |  | Prepare User Acceptance Test Plan | 1d | 2018-04-11 | 2018-04-11 |  |  |  |
| 53 |  | Review/FinaliseAcceptance Test Plan | 1d | 2018-04-11 | 2018-04-11 |  |  |  |
| 54 |  | Perform Integration Testing with PT07 | 1d | 2018-04-11 | 2018-04-11 |  |  |  |
| 55 |  | Review Test Result and perform Corrective Action | 1d | 2018-04-11 | 2018-04-11 |  |  |  |
| 56 |  | End User Training Manual and Write User Guide | 1d | 2018-04-11 | 2018-04-11 |  |  |  |
| 57 |  | Review/FinaliseUser Guide | 1d | 2018-04-11 | 2018-04-11 |  |  |  |
| 58 |  | Perform User Acceptance Testing | 1d | 2018-04-11 | 2018-04-11 |  |  |  |
| 59 |  | Review Acceptance Test Result/Corrective Action | 1d | 2018-04-11 | 2018-04-11 |  |  |  |
| 60 |  | Prepare User Acceptance Test Document | 1d | 2018-04-11 | 2018-04-11 |  |  |  |
| 61 |  | Review/FinaliseUser Acceptance Test Document | 1d | 2018-04-11 | 2018-04-11 |  |  |  |
| 62 | 7 | **Revised Documentation for 2nd Audit** | 1d | 2018-04-11 | 2018-04-11 |  |  |  |
| 63 |  | Revised High Level Design Specification | 1d | 2018-04-11 | 2018-04-11 |  |  |  |
| 64 |  | Revised Project Plan | 1d | 2018-04-11 | 2018-04-11 |  |  |  |
| 65 | 8 | **Incorporate Audit Feedbacks** | 1d | 2018-04-11 | 2018-04-11 |  |  |  |
| 66 |  | Ad-hoc Management | 1d | 2018-04-11 | 2018-04-11 |  |  |  |
| 67 |  | Revised on Audit Comment | 1d | 2018-04-11 | 2018-04-11 |  |  |  |
| 68 |  | Prepare for Presentation | 1d | 2018-04-11 | 2018-04-11 |  |  |  |
| 69 | 9 | **Analysis and Design Modelling (Increment 2)** | 1d | 2018-04-11 | 2018-04-11 |  |  |  |
| 70 |  | Identify Domain Objects/Attributes | 1d | 2018-04-11 | 2018-04-11 |  |  |  |
| 71 |  | Produce Class Diagram/Collaboration Diagram | 1d | 2018-04-11 | 2018-04-11 |  |  |  |

| ID | WBS | Task | Duration | Start | Finish |
| --- | --- | --- | --- | --- | --- |
| 72 |  | Produce Use Case Model Survey Report (Requirement) | 1d | 2018-04-11 | 2018-04-11 |
| 73 |  | Review/FinaliseUse Case Model Survey Report (Requirement) | 1d | 2018-04-11 | 2018-04-11 |
| 74 |  | Produce Use Case Model Survey Report (Analysis) | 1d | 2018-04-11 | 2018-04-11 |
| 75 |  | Review/FinaliseUse Case Model Survey Report (Analysis) | 1d | 2018-04-11 | 2018-04-11 |
| 76 |  | Define Object Associations | 1d | 2018-04-11 | 2018-04-11 |
| 77 |  | Produce Design Model Report | 1d | 2018-04-11 | 2018-04-11 |
| 78 |  | Review/FinaliseDesign Model Report | 1d | 2018-04-11 | 2018-04-11 |
| 79 | 10 | **Programming (Increment 2)** | 1d | 2018-04-11 | 2018-04-11 |
| 80 |  | Backend coding | 1d? | 2018-04-11 | 2018-04-11 |
| 81 |  | Frontend coding | 1d | 2018-04-11 | 2018-04-11 |
| 82 |  | Unit Testing | 1d | 2018-04-11 | 2018-04-11 |
| 83 |  | Peer Review of Coding | 1d | 2018-04-11 | 2018-04-11 |
| 84 | 11 | **Testing (Increment 2)** | 1d | 2018-04-11 | 2018-04-11 |
| 85 |  | Produce System Test Plan | 1d | 2018-04-11 | 2018-04-11 |
| 86 |  | Review/FinaliseSystem Test Plan | 1d | 2018-04-11 | 2018-04-11 |
| 87 |  | Perform System Testing | 1d | 2018-04-11 | 2018-04-11 |
| 88 |  | Bug Review/Corrective action/Rework | 1d | 2018-04-11 | 2018-04-11 |
| 89 |  | Prepare SIT Document | 1d | 2018-04-11 | 2018-04-11 |
| 90 |  | Review/FinaliseSIT Document | 1d | 2018-04-11 | 2018-04-11 |
| 91 |  | Prepare User Acceptance Test Plan | 1d | 2018-04-11 | 2018-04-11 |
| 92 |  | Review/FinaliseAcceptance Test Plan | 1d | 2018-04-11 | 2018-04-11 |
| 93 |  | Perform Integration Testing with PT07 | 1d | 2018-04-11 | 2018-04-11 |
| 94 |  | Review Test Result and perform Corrective Action | 1d | 2018-04-11 | 2018-04-11 |
| 95 |  | Performance Testing | 1d | 2018-04-11 | 2018-04-11 |
| 96 |  | End User Training Manual and Write User Guide | 1d | 2018-04-11 | 2018-04-11 |
| 97 |  | Review/FinaliseUser Guide | 1d | 2018-04-11 | 2018-04-11 |
| 98 |  | Perform User Acceptance Testing | 1d | 2018-04-11 | 2018-04-11 |
| 99 |  | Review Acceptance Test Result/Corrective Action | 1d | 2018-04-11 | 2018-04-11 |
| 100 |  | Prepare User Acceptance Test Document | 1d | 2018-04-11 | 2018-04-11 |
| 101 |  | Review/FinaliseUser Acceptance Test Document | 1d | 2018-04-11 | 2018-04-11 |
| 102 | 12 | **Implementation** | 1d | 2018-04-11 | 2018-04-11 |
| 103 |  | Source Deployment Process Guide | 1d | 2018-04-11 | 2018-04-11 |
| 104 |  | AWS setup and manual | 1d | 2018-04-11 | 2018-04-11 |
| 105 |  | Release Project | 1d | 2018-04-11 | 2018-04-11 |
| 106 |  | Prepare User Training | 1d | 2018-04-11 | 2018-04-11 |
| 107 |  | Training User | 1d | 2018-04-11 | 2018-04-11 |
| 108 |  | Revised Documents and Sign-Off | 1d | 2018-04-11 | 2018-04-11 |
| 109 |  | Project Hand-over | 1d | 2018-04-11 | 2018-04-11 |
| 110 | 13 | **Incorporate Audit Feedbacks** | 1d | 2018-04-11 | 2018-04-11 |
| 111 |  | Ad-hoc Management | 1d | 2018-04-11 | 2018-04-11 |
| 112 |  | Revised on Audit Comment | 1d | 2018-04-11 | 2018-04-11 |
| 113 |  | Prepare for Presentation | 1d | 2018-04-11 | 2018-04-11 |

## Version 2 (saved 2018-04-14, file RAM.mpp)

Note of the change: added schedule for analysis and design

Last finish 2018-05-02 → 2018-06-04 (+33d).

Added:

| ID | Task | Duration | Start | Finish | Constraint | Resources |
| --- | --- | --- | --- | --- | --- | --- |
| 32 | Produce Class Diagrams | 5d | 2018-05-07 | 2018-05-11 | start no earlier than 2018-05-07 | Kaung Myat Bo; Treza |

Removed: 33 Produce Use Case Model Survey Report (Analysis); 34 Review/FinaliseUse Case Model Survey Report (Analysis); 35 Define Object Associations

Changed:

| ID | Task | Start | Finish | Duration | Total float | Predecessors | Other |
| --- | --- | --- | --- | --- | --- | --- | --- |
| 2 | **Project Initiation** | 2018-02-08 → 2018-02-01 (-7d) | 2018-04-06 → 2018-04-13 (+7d) | 43d → 52d | none → 20d |  |  |
| 3 | Setup project filing system | 2018-02-08 → 2018-02-01 (-7d) | 2018-02-16 → 2018-02-09 (-7d) |  | 54d → 83d |  |  |
| 4 | Project requirement gathering | 2018-02-08 → 2018-02-01 (-7d) | 2018-02-26 → 2018-02-28 (+2d) | 13d → 20d | 16d → 38d |  | resources Bala; Kaung Myat Bo; Sponsor; Treza → Kaung Myat Bo; Sponsor; Treza; Agnes |
| 5 | Project risk tracker | 2018-02-27 → 2018-03-01 (+2d) |  | 7d → 5d | 29d → 55d | 4 → none | constraint none → start no earlier than 2018-03-01 |
| 6 | Prepare WBS | 2018-02-27 → 2018-03-01 (+2d) | 2018-03-16 → 2018-03-07 (-9d) | 14d → 5d | 16d → 38d |  |  |
| 7 | Produce project plan document | 2018-03-17 → 2018-03-20 (+3d) | 2018-03-26 → 2018-03-28 (+2d) | 7d → 5d | 16d → 12d |  | constraint start no earlier than 2018-03-17 → start no earlier than 2018-03-20 |
| 8 | Review/Finalize project plan document | 2018-03-27 → 2018-03-29 (+2d) | 2018-03-27 → 2018-03-30 (+3d) | 1d → 2d | 16d → 53d |  |  |
| 9 | Produce quality plan | 2018-02-27 → 2018-02-12 (-15d) | 2018-03-07 → 2018-02-16 (-19d) | 7d → 5d | 32d → 83d | 4 → 3 |  |
| 10 | Review/Finalize quality plan |  |  |  | 32d → 55d | 9 → 5 |  |
| 11 | Produce User requirement specification | 2018-03-08 → 2018-03-09 (+1d) | 2018-03-12 → 2018-03-22 (+10d) | 3d → 10d | 29d → 55d | 5 → 10 |  |
| 12 | Review/Finalize User requirement specification | 2018-03-13 → 2018-03-23 (+10d) | 2018-03-13 → 2018-03-26 (+13d) | 1d → 2d | 29d → 55d |  |  |
| 13 | Produce Use Case Modelling survey report | 2018-03-28 → 2018-03-29 (+1d) | 2018-04-04 → 2018-04-11 (+7d) | 6d → 10d | 16d → 12d | 8 → 7 |  |
| 14 | Review/Finalize Use Case Modelling survey report | 2018-04-05 → 2018-04-12 (+7d) | 2018-04-05 → 2018-04-13 (+8d) | 1d → 2d | 16d → 12d |  |  |
| 15 | Produce User Interface Speficication 1 |  | 2018-03-17 → 2018-03-22 (+5d) | 7d → 10d | 32d → 59d |  | was named Produce User Interface Speficication |
| 16 | Review/Finalize User Interface Specification | 2018-03-19 → 2018-03-27 (+8d) | 2018-03-19 → 2018-03-28 (+9d) | 1d → 2d | 32d → 55d | 15 → 12 | resources Bala; Kaung Myat Bo; Nay La; Sponsor; Treza; William → Bala; Treza; William |
| 17 | Produce High Level Design Specification | 2018-03-14 → 2018-03-01 (-13d) | 2018-03-21 → 2018-03-15 (-6d) | 7d → 10d | 29d → 62d | 12 → 4 |  |
| 18 | Review/Finalize High Level Design Specification | 2018-03-22 → 2018-03-16 (-6d) | 2018-03-22 → 2018-03-19 (-3d) | 1d → 2d | 29d → 62d |  |  |
| 19 | Exploring AWS services | 2018-02-27 → 2018-03-01 (+2d) | 2018-03-16 → 2018-04-10 (+25d) | 14d? → 20d | 34d → 46d |  | resources none → William |
| 20 | **Build Prototype** | 2018-04-06 → 2018-04-16 (+10d) | 2018-04-27 → 2018-04-26 (-1d) | 16d → 9d | none → 12d |  |  |
| 21 | Prepare prototype | 2018-04-06 → 2018-04-16 (+10d) | 2018-04-25 → 2018-04-20 (-5d) | 14d → 5d | 3d → 12d | none → 14 |  |
| 22 | Test prototype | 2018-04-26 → 2018-04-23 (-3d) | 2018-04-27 → 2018-04-24 (-3d) |  | 3d → 36d |  | resources Bala; William → Bala; Nay La |
| 23 | Produce Prototype Study Report | 2018-04-06 → 2018-04-23 (+17d) | 2018-04-10 → 2018-04-24 (+14d) | 3d → 2d | 16d → 12d | 14 → 21 | resources Bala; Nay La → William |
| 24 | Review/Finalize Prototype Study Report | 2018-04-26 → 2018-04-25 (-1d) |  | 1d → 2d | 4d → 12d | 21 → 23 | resources Kaung Myat Bo; Sponsor; Treza; William → Treza; Bala |
| 26 | Revised on Audit Comments |  | 2018-04-30 → 2018-04-27 (-3d) | 2d → 1d | none → 12d | none → 24 | resources Kaung Myat Bo; Nay La; Treza → Kaung Myat Bo; Nay La; Treza; Bala; William |
| 27 | Prepare for presentation | 2018-05-01 → 2018-04-30 (-1d) |  | 2d → 3d | none → 12d |  |  |
| 28 | **Analysis and Design Modelling (Increment 1)** | 2018-04-11 → 2018-05-03 (+22d) | 2018-04-11 → 2018-06-04 (+54d) | 1d → 23d | none → 0d |  |  |
| 29 | Produce Use Case Model Survey Report (Requirement) | 2018-04-11 → 2018-05-03 (+22d) | 2018-04-11 → 2018-05-04 (+23d) | 1d → 2d | none → 23d | none → 27 | resources none → Kaung Myat Bo; Treza |
| 30 | Review/FinaliseUse Case Model Survey Report (Requirement) | 2018-04-11 → 2018-05-10 (+29d) | 2018-04-11 → 2018-05-11 (+30d) | 1d → 2d | none → 16d | none → 29 | constraint none → start no earlier than 2018-05-10; resources none → Bala |
| 31 | Identify Domain Objects/Attributes | 2018-04-11 → 2018-05-03 (+22d) | 2018-04-11 → 2018-05-09 (+28d) | 1d → 5d | none → 12d | none → 27 | resources none → Bala; Nay La; William |
| 33 | Produce Sequence Diagrams | 2018-04-11 → 2018-05-14 (+33d) | 2018-04-11 → 2018-05-25 (+44d) | 1d → 10d |  |  | was named Produce Class Diagram/Sequence Diagram; constraint none → start no earlier than 2018-05-14; resources none → William; Bala; Kaung Myat Bo; Nay La; Treza |
| 34 | Produce Design Model Report | 2018-04-11 → 2018-05-28 (+47d) | 2018-04-11 → 2018-05-30 (+49d) | 1d → 3d | none → 0d | none → 33, 31, 32 | resources none → William; Bala |
| 35 | Review/FinaliseDesign Model Report | 2018-04-11 → 2018-05-31 (+50d) | 2018-04-11 → 2018-06-04 (+54d) | 1d → 3d | none → 0d | none → 34 |  |
| 36 | **Implementation & Coding** | 2018-04-11 → 2018-05-10 (+29d) | 2018-04-11 → 2018-05-15 (+34d) | 1d → 4d | none → 0d |  |  |
| 37 | Setup necessary cloud environment | 2018-04-11 → 2018-05-10 (+29d) | 2018-04-11 → 2018-05-11 (+30d) | 1d → 2d |  |  | resources none → Nay La; William |
| 38 | Source control plan and setup | 2018-04-11 → 2018-05-10 (+29d) | 2018-04-11 → 2018-05-15 (+34d) | 1d → 4d |  |  |  |
| 39 | Backend coding | 2018-04-11 → 2018-05-10 (+29d) | 2018-04-11 → 2018-05-15 (+34d) | 1d? → 4d? |  |  |  |
| 40 | Frontend coding | 2018-04-11 → 2018-05-10 (+29d) | 2018-04-11 → 2018-05-15 (+34d) | 1d → 4d |  |  |  |
| 41 | Unit testing | 2018-04-11 → 2018-05-10 (+29d) | 2018-04-11 → 2018-05-15 (+34d) | 1d → 4d |  |  |  |
| 42 | Peer review coding | 2018-04-11 → 2018-05-10 (+29d) | 2018-04-11 → 2018-05-15 (+34d) | 1d → 4d |  |  |  |
| 43 | **Testing** |  |  | 1d → 0d |  |  |  |
| 44 | Produce System Test Plan |  |  | 1d → 4d |  |  |  |
| 45 | Review/FinaliseSystem Test Plan |  |  | 1d → 4d |  |  |  |
| 46 | Perform System Testing |  |  | 1d → 4d |  |  |  |
| 47 | Bug Review/Corrective action/Rework |  |  | 1d → 4d |  |  |  |
| 48 | Prepare SIT Document |  |  | 1d → 4d |  |  |  |
| 49 | Review/FinaliseSIT Document |  |  | 1d → 4d |  |  |  |
| 50 | Prepare User Acceptance Test Plan |  |  | 1d → 4d |  |  |  |
| 51 | Review/FinaliseAcceptance Test Plan |  |  | 1d → 4d |  |  |  |
| 52 | Perform Integration Testing with PT07 |  |  | 1d → 4d |  |  |  |
| 53 | Review Test Result and perform Corrective Action |  |  | 1d → 4d |  |  |  |
| 54 | End User Training Manual and Write User Guide |  |  | 1d → 4d |  |  |  |
| 55 | Review/FinaliseUser Guide |  |  | 1d → 4d |  |  |  |
| 56 | Perform User Acceptance Testing |  |  | 1d → 4d |  |  |  |
| 57 | Review Acceptance Test Result/Corrective Action |  |  | 1d → 4d |  |  |  |
| 58 | Prepare User Acceptance Test Document |  |  | 1d → 4d |  |  |  |
| 59 | Review/FinaliseUser Acceptance Test Document |  |  | 1d → 4d |  |  |  |
| 60 | **Revised Documentation for 2nd Audit** |  |  | 1d → 0d |  |  |  |
| 61 | Revised High Level Design Specification |  |  | 1d → 4d |  |  |  |
| 62 | Revised Project Plan |  |  | 1d → 4d |  |  |  |
| 63 | **Incorporate Audit Feedbacks** |  |  | 1d → 0d |  |  |  |
| 64 | Ad-hoc Management |  |  | 1d → 4d |  |  |  |
| 65 | Revised on Audit Comment |  |  | 1d → 4d |  |  |  |
| 66 | Prepare for Presentation |  |  | 1d → 4d |  |  |  |
| 67 | **Analysis and Design Modelling (Increment 2)** |  |  | 1d → 0d |  |  |  |
| 68 | Identify Domain Objects/Attributes |  |  | 1d → 4d |  |  |  |
| 69 | Produce Class Diagram/Collaboration Diagram |  |  | 1d → 4d |  |  |  |
| 70 | Produce Use Case Model Survey Report (Requirement) |  |  | 1d → 4d |  |  |  |
| 71 | Review/FinaliseUse Case Model Survey Report (Requirement) |  |  | 1d → 4d |  |  |  |
| 72 | Produce Use Case Model Survey Report (Analysis) |  |  | 1d → 4d |  |  |  |
| 73 | Review/FinaliseUse Case Model Survey Report (Analysis) |  |  | 1d → 4d |  |  |  |

| ID | Task | Duration |
| --- | --- | --- |
| 74 | Define Object Associations | 1d → 4d |
| 75 | Produce Design Model Report | 1d → 4d |
| 76 | Review/FinaliseDesign Model Report | 1d → 4d |
| 77 | **Programming (Increment 2)** | 1d → 0d |
| 78 | Backend coding | 1d? → 4d? |
| 79 | Frontend coding | 1d → 4d |
| 80 | Unit Testing | 1d → 4d |
| 81 | Peer Review of Coding | 1d → 4d |
| 82 | **Testing (Increment 2)** | 1d → 0d |
| 83 | Produce System Test Plan | 1d → 4d |
| 84 | Review/FinaliseSystem Test Plan | 1d → 4d |
| 85 | Perform System Testing | 1d → 4d |
| 86 | Bug Review/Corrective action/Rework | 1d → 4d |
| 87 | Prepare SIT Document | 1d → 4d |
| 88 | Review/FinaliseSIT Document | 1d → 4d |
| 89 | Prepare User Acceptance Test Plan | 1d → 4d |
| 90 | Review/FinaliseAcceptance Test Plan | 1d → 4d |
| 91 | Perform Integration Testing with PT07 | 1d → 4d |
| 92 | Review Test Result and perform Corrective Action | 1d → 4d |
| 93 | Performance Testing | 1d → 4d |
| 94 | End User Training Manual and Write User Guide | 1d → 4d |
| 95 | Review/FinaliseUser Guide | 1d → 4d |
| 96 | Perform User Acceptance Testing | 1d → 4d |
| 97 | Review Acceptance Test Result/Corrective Action | 1d → 4d |
| 98 | Prepare User Acceptance Test Document | 1d → 4d |
| 99 | Review/FinaliseUser Acceptance Test Document | 1d → 4d |
| 100 | **Implementation** | 1d → 0d |
| 101 | Source Deployment Process Guide | 1d → 4d |
| 102 | AWS setup and manual | 1d → 4d |
| 103 | Release Project | 1d → 4d |
| 104 | Prepare User Training | 1d → 4d |
| 105 | Training User | 1d → 4d |
| 106 | Revised Documents and Sign-Off | 1d → 4d |
| 107 | Project Hand-over | 1d → 4d |
| 108 | **Incorporate Audit Feedbacks** | 1d → 0d |
| 109 | Ad-hoc Management | 1d → 4d |
| 110 | Revised on Audit Comment | 1d → 4d |
| 111 | Prepare for Presentation | 1d → 4d |

## Version 3 (saved 2018-04-17, file RAM.mpp)

Note of the change: finishing MPP

Last finish 2018-06-04 → 2019-01-22 (+232d).

Added:

| ID | Task | Duration | Start | Finish | Constraint | Resources |
| --- | --- | --- | --- | --- | --- | --- |
| 69 | Produce Class Diagrams | 5d | 2018-09-05 | 2018-09-11 | start no earlier than 2018-09-05 | Kaung Myat Bo; Treza |
| 70 | Produce Sequence Diagrams | 22d | 2018-09-10 | 2018-10-09 | start no earlier than 2018-09-10 | William; Bala; Kaung Myat Bo; Nay La; Treza |

Removed: 64 Ad-hoc Management; 69 Produce Class Diagram/Collaboration Diagram; 72 Produce Use Case Model Survey Report (Analysis); 73 Review/FinaliseUse Case Model Survey Report (Analysis); 74 Define Object Associations; 93 Performance Testing; 109 Ad-hoc Management

Changed:

| ID | Task | Start | Finish | Duration | Total float | Predecessors | Other |
| --- | --- | --- | --- | --- | --- | --- | --- |
| 27 | **Analysis and Design Modelling (Increment 1)** |  | 2018-06-04 → 2018-06-15 (+11d) | 23d → 32d | 0d → 141d |  |  |
| 28 | Produce Use Case Model Survey Report (Requirement) |  |  |  | 23d → 185d | 26 → none | constraint none → start no earlier than 2018-05-03 |
| 32 | Produce Sequence Diagrams |  | 2018-05-25 → 2018-06-08 (+14d) | 10d → 20d | none → 134d |  |  |
| 33 | Produce Design Model Report | 2018-05-28 → 2018-06-11 (+14d) | 2018-05-30 → 2018-06-13 (+14d) |  | 0d → 134d |  |  |
| 34 | Review/FinaliseDesign Model Report | 2018-05-31 → 2018-06-14 (+14d) | 2018-06-04 → 2018-06-15 (+11d) | 3d → 2d | 0d → 157d |  | resources none → Kaung Myat Bo; Treza; Bala; Nay La; William |
| 35 | **Implementation & Coding** |  | 2018-05-15 → 2018-07-20 (+66d) | 4d → 52d | 0d → 132d |  |  |
| 36 | Setup necessary cloud environment |  |  |  | none → 182d |  | constraint none → start no earlier than 2018-05-10 |
| 37 | Source control plan and setup | 2018-05-10 → 2018-06-11 (+32d) | 2018-05-15 → 2018-06-13 (+29d) | 4d → 3d | none → 159d |  | constraint none → start no earlier than 2018-06-11; resources none → Kaung Myat Bo; Treza; Nay La |
| 38 | Backend coding | 2018-05-10 → 2018-06-18 (+39d) | 2018-05-15 → 2018-07-13 (+59d) | 4d? → 20d | none → 132d | none → 32, 33 | constraint none → start no earlier than 2018-06-18; resources none → Treza; William |
| 39 | Frontend coding | 2018-05-10 → 2018-06-18 (+39d) | 2018-05-15 → 2018-07-13 (+59d) | 4d → 20d | none → 132d | none → 32, 33 | constraint none → start no earlier than 2018-06-18; resources none → Kaung Myat Bo; Bala |
| 40 | Unit testing | 2018-05-10 → 2018-07-19 (+70d) | 2018-05-15 → 2018-07-20 (+66d) | 4d → 2d | none → 132d | none → 41 | resources none → Bala; Kaung Myat Bo; Treza; William |
| 41 | Peer review coding | 2018-05-10 → 2018-07-16 (+67d) | 2018-05-15 → 2018-07-18 (+64d) | 4d → 3d | none → 132d | none → 38, 39 | resources none → Bala; Kaung Myat Bo; Treza; William |
| 42 | **Testing** | 2018-04-11 → 2018-06-18 (+68d) | 2018-04-11 → 2018-08-27 (+138d) | 0d → 51d | none → 106d |  |  |
| 43 | Produce System Test Plan | 2018-04-11 → 2018-06-18 (+68d) | 2018-04-11 → 2018-06-22 (+72d) | 4d → 5d | none → 145d |  | constraint none → start no earlier than 2018-06-18; resources none → Nay La |
| 44 | Review/FinaliseSystem Test Plan | 2018-04-11 → 2018-07-23 (+103d) | 2018-04-11 → 2018-07-24 (+104d) | 4d → 2d | none → 125d | none → 43 | constraint none → start no earlier than 2018-07-23; resources none → Treza; Kaung Myat Bo; Bala; Nay La; William |
| 45 | Perform System Testing | 2018-04-11 → 2018-07-25 (+105d) | 2018-04-11 → 2018-07-27 (+107d) | 4d → 3d | none → 125d | none → 44 | resources none → Bala; Kaung Myat Bo; Nay La; Treza; William |
| 46 | Bug Review/Corrective action/Rework | 2018-04-11 → 2018-07-30 (+110d) | 2018-04-11 → 2018-07-31 (+111d) | 4d → 2d | none → 125d | none → 45 | resources none → Bala; Kaung Myat Bo; Nay La; Treza; William |
| 47 | Prepare SIT Document | 2018-04-11 → 2018-06-25 (+75d) | 2018-04-11 → 2018-06-29 (+79d) | 4d → 5d | none → 139d |  | constraint none → start no earlier than 2018-06-25; resources none → Nay La |
| 48 | Review/FinaliseSIT Document | 2018-04-11 → 2018-08-01 (+112d) | 2018-04-11 → 2018-08-02 (+113d) | 4d → 2d | none → 117d | none → 47 | constraint none → start no earlier than 2018-08-01; resources none → Bala; Kaung Myat Bo; Nay La; Treza; William |
| 49 | Prepare User Acceptance Test Plan | 2018-04-11 → 2018-07-02 (+82d) | 2018-04-11 → 2018-07-06 (+86d) | 4d → 5d | none → 138d |  | constraint none → start no earlier than 2018-07-02; resources none → Nay La |
| 50 | Review/FinaliseAcceptance Test Plan | 2018-04-11 → 2018-08-13 (+124d) | 2018-04-11 → 2018-08-14 (+125d) | 4d → 2d | none → 113d | none → 49 | constraint none → start no earlier than 2018-08-13; resources none → Bala; Kaung Myat Bo; Nay La; Treza; William |
| 51 | Perform Integration Testing with PT07 | 2018-04-11 → 2018-08-03 (+114d) | 2018-04-11 → 2018-08-07 (+118d) | 4d → 3d | none → 117d | none → 48 | resources none → Bala; Kaung Myat Bo; Nay La; Treza; William |
| 52 | Review Test Result and perform Corrective Action | 2018-04-11 → 2018-08-08 (+119d) | 2018-04-11 → 2018-08-10 (+121d) | 4d → 3d | none → 117d | none → 51 | resources none → Bala; Kaung Myat Bo; Nay La; Treza; William |
| 53 | End User Training Manual and Write User Guide | 2018-04-11 → 2018-07-09 (+89d) | 2018-04-11 → 2018-07-13 (+93d) | 4d → 5d | none → 130d |  | constraint none → start no earlier than 2018-07-09; resources none → Nay La |
| 54 | Review/FinaliseUser Guide | 2018-04-11 → 2018-08-16 (+127d) | 2018-04-11 → 2018-08-17 (+128d) | 4d → 2d | none → 107d | none → 53 | constraint none → start no earlier than 2018-08-16; resources none → Bala; Kaung Myat Bo; Nay La; Treza; William |
| 55 | Perform User Acceptance Testing | 2018-04-11 → 2018-08-20 (+131d) | 2018-04-11 → 2018-08-22 (+133d) | 4d → 3d | none → 107d | none → 54 | resources none → Bala; Kaung Myat Bo; Nay La; Sponsor; Treza; William |
| 56 | Review Acceptance Test Result/Corrective Action | 2018-04-11 → 2018-08-23 (+134d) | 2018-04-11 → 2018-08-24 (+135d) | 4d → 2d | none → 107d | none → 55, 50 | resources none → Bala; Kaung Myat Bo; Nay La; Treza; William |
| 57 | Prepare User Acceptance Test Document | 2018-04-11 → 2018-07-16 (+96d) | 2018-04-11 → 2018-07-20 (+100d) | 4d → 5d | none → 130d |  | constraint none → start no earlier than 2018-07-16; resources none → Nay La |
| 58 | Review/FinaliseUser Acceptance Test Document | 2018-04-11 → 2018-08-27 (+138d) | 2018-04-11 → 2018-08-27 (+138d) | 4d → 1d | none → 105d | none → 57 | constraint none → start no earlier than 2018-08-27; resources none → Bala; Kaung Myat Bo; Nay La; Treza; William |
| 59 | **Revised Documentation for 2nd Audit** | 2018-04-11 → 2018-08-28 (+139d) | 2018-04-11 → 2018-08-28 (+139d) | 0d → 1d | none → 105d |  |  |
| 60 | Revised High Level Design Specification | 2018-04-11 → 2018-08-28 (+139d) | 2018-04-11 → 2018-08-28 (+139d) | 4d → 1d | none → 105d | none → 58 | resources none → Treza |
| 61 | Revised Project Plan | 2018-04-11 → 2018-08-28 (+139d) | 2018-04-11 → 2018-08-28 (+139d) | 4d → 1d | none → 105d | none → 58 | resources none → Kaung Myat Bo |
| 62 | **Incorporate Audit Feedbacks** | 2018-04-11 → 2018-08-28 (+139d) | 2018-04-11 → 2018-08-31 (+142d) | 0d → 4d | none → 1d |  |  |
| 63 | Revised on Audit Comment | 2018-04-11 → 2018-08-28 (+139d) | 2018-04-11 → 2018-08-28 (+139d) | 4d → 1d | none → 105d | none → 58 | resources none → Nay La |
| 64 | Prepare for Presentation | 2018-04-11 → 2018-08-29 (+140d) | 2018-04-11 → 2018-08-31 (+142d) | 4d → 3d |  |  | resources none → Bala; Kaung Myat Bo; Nay La; Treza; William |
| 65 | **Analysis and Design Modelling (Increment 2)** | 2018-04-11 → 2018-09-03 (+145d) | 2018-04-11 → 2018-10-16 (+188d) | 0d → 32d | none → 45d |  |  |
| 66 | Produce Use Case Model Survey Report (Requirement) | 2018-04-11 → 2018-09-03 (+145d) | 2018-04-11 → 2018-09-04 (+146d) | 4d → 2d | none → 98d | none → 64 | constraint none → start no earlier than 2018-05-03; resources none → Kaung Myat Bo; Treza |
| 67 | Review/FinaliseUse Case Model Survey Report (Requirement) | 2018-04-11 → 2018-09-10 (+152d) | 2018-04-11 → 2018-09-11 (+153d) | 4d → 2d | none → 95d | none → 66 | constraint none → start no earlier than 2018-09-10; resources none → Bala |
| 68 | Identify Domain Objects/Attributes | 2018-04-11 → 2018-09-03 (+145d) | 2018-04-11 → 2018-09-07 (+149d) | 4d → 5d | none → 97d | none → 64 | resources none → Bala; Nay La; William |
| 71 | Produce Design Model Report | 2018-04-11 → 2018-10-10 (+182d) | 2018-04-11 → 2018-10-12 (+184d) | 4d → 3d | none → 40d | none → 70 | resources none → William; Bala |
| 72 | Review/FinaliseDesign Model Report | 2018-04-11 → 2018-10-15 (+187d) | 2018-04-11 → 2018-10-16 (+188d) | 4d → 2d | none → 40d | none → 71 | resources none → Kaung Myat Bo; Treza; Bala; Nay La; William |
| 73 | **Programming (Increment 2)** | 2018-04-11 → 2018-10-17 (+189d) | 2018-04-11 → 2018-11-27 (+230d) | 0d → 30d | none → 40d |  |  |
| 74 | Backend coding | 2018-04-11 → 2018-10-17 (+189d) | 2018-04-11 → 2018-11-20 (+223d) | 4d? → 25d | none → 45d | none → 72 | resources none → Treza; William |
| 75 | Frontend coding | 2018-04-11 → 2018-10-17 (+189d) | 2018-04-11 → 2018-11-20 (+223d) | 4d → 25d | none → 40d | none → 72 | resources none → Bala; Kaung Myat Bo |
| 76 | Unit Testing | 2018-04-11 → 2018-11-26 (+229d) | 2018-04-11 → 2018-11-27 (+230d) | 4d → 2d | none → 40d | none → 77 | resources none → Bala; Kaung Myat Bo; Treza; William |
| 77 | Peer Review of Coding | 2018-04-11 → 2018-11-21 (+224d) | 2018-04-11 → 2018-11-23 (+226d) | 4d → 3d | none → 40d | none → 75 | resources none → Bala; Kaung Myat Bo; Treza; William |
| 78 | **Testing (Increment 2)** | 2018-04-11 → 2018-10-17 (+189d) | 2018-04-11 → 2019-01-01 (+265d) | 0d → 55d | none → 15d |  |  |
| 79 | Produce System Test Plan | 2018-04-11 → 2018-10-17 (+189d) | 2018-04-11 → 2018-10-23 (+195d) | 4d → 5d | none → 58d |  | constraint none → start no earlier than 2018-10-17; resources none → Nay La |
| 80 | Review/FinaliseSystem Test Plan | 2018-04-11 → 2018-11-28 (+231d) | 2018-04-11 → 2018-11-29 (+232d) | 4d → 2d | none → 33d | none → 79 | constraint none → start no earlier than 2018-11-28; resources none → Treza; Kaung Myat Bo; Bala; Nay La; William |
| 81 | Perform System Testing | 2018-04-11 → 2018-11-30 (+233d) | 2018-04-11 → 2018-12-04 (+237d) | 4d → 3d | none → 33d | none → 80 | resources none → Bala; Kaung Myat Bo; Nay La; Treza; William |
| 82 | Bug Review/Corrective action/Rework | 2018-04-11 → 2018-12-05 (+238d) | 2018-04-11 → 2018-12-06 (+239d) | 4d → 2d | none → 33d | none → 81 | resources none → Bala; Kaung Myat Bo; Nay La; Treza; William |
| 83 | Prepare SIT Document | 2018-04-11 → 2018-10-24 (+196d) | 2018-04-11 → 2018-10-30 (+202d) | 4d → 5d | none → 52d |  | constraint none → start no earlier than 2018-10-24; resources none → Nay La |
| 84 | Review/FinaliseSIT Document | 2018-04-11 → 2018-12-07 (+240d) | 2018-04-11 → 2018-12-10 (+243d) | 4d → 2d | none → 25d | none → 83 | constraint none → start no earlier than 2018-12-07; resources none → Bala; Kaung Myat Bo; Nay La; Treza; William |
| 85 | Prepare User Acceptance Test Plan | 2018-04-11 → 2018-10-31 (+203d) | 2018-04-11 → 2018-11-06 (+209d) | 4d → 5d | none → 51d |  | constraint none → start no earlier than 2018-10-31; resources none → Nay La |
| 86 | Review/FinaliseAcceptance Test Plan | 2018-04-11 → 2018-12-19 (+252d) | 2018-04-11 → 2018-12-20 (+253d) | 4d → 2d | none → 21d | none → 85 | constraint none → start no earlier than 2018-12-19; resources none → Bala; Kaung Myat Bo; Nay La; Treza; William |
| 87 | Perform Integration Testing with PT07 | 2018-04-11 → 2018-12-11 (+244d) | 2018-04-11 → 2018-12-13 (+246d) | 4d → 3d | none → 25d | none → 84 | resources none → Bala; Kaung Myat Bo; Nay La; Treza; William |
| 88 | Review Test Result and perform Corrective Action | 2018-04-11 → 2018-12-14 (+247d) | 2018-04-11 → 2018-12-18 (+251d) | 4d → 3d | none → 25d | none → 87 | resources none → Bala; Kaung Myat Bo; Nay La; Treza; William |
| 89 | End User Training Manual and Write User Guide | 2018-04-11 → 2018-11-07 (+210d) | 2018-04-11 → 2018-11-13 (+216d) | 4d → 5d | none → 43d |  | constraint none → start no earlier than 2018-11-07; resources none → Nay La |
| 90 | Review/FinaliseUser Guide | 2018-04-11 → 2018-12-21 (+254d) | 2018-04-11 → 2018-12-24 (+257d) | 4d → 2d | none → 16d | none → 89 | constraint none → start no earlier than 2018-12-21; resources none → Bala; Kaung Myat Bo; Nay La; Treza; William |
| 91 | Perform User Acceptance Testing | 2018-04-11 → 2018-12-25 (+258d) | 2018-04-11 → 2018-12-27 (+260d) | 4d → 3d | none → 16d | none → 90 | resources none → Bala; Kaung Myat Bo; Nay La; Sponsor; Treza; William |
| 92 | Review Acceptance Test Result/Corrective Action | 2018-04-11 → 2018-12-28 (+261d) | 2018-04-11 → 2018-12-31 (+264d) | 4d → 2d | none → 16d | none → 86, 91 | resources none → Bala; Kaung Myat Bo; Nay La; Treza; William |
| 93 | Prepare User Acceptance Test Document | 2018-04-11 → 2018-11-14 (+217d) | 2018-04-11 → 2018-11-20 (+223d) | 4d → 5d | none → 44d |  | constraint none → start no earlier than 2018-11-14; resources none → Nay La |
| 94 | Review/FinaliseUser Acceptance Test Document | 2018-04-11 → 2019-01-01 (+265d) | 2018-04-11 → 2019-01-01 (+265d) | 4d → 1d | none → 15d | none → 93 | constraint none → start no earlier than 2019-01-01; resources none → Bala; Kaung Myat Bo; Nay La; Treza; William |
| 95 | **Implementation** | 2018-04-11 → 2018-11-21 (+224d) | 2018-04-11 → 2019-01-16 (+280d) | 0d → 41d | none → 4d |  |  |
| 96 | Source Deployment Process Guide | 2018-04-11 → 2018-11-21 (+224d) | 2018-04-11 → 2018-11-27 (+230d) | 4d → 5d | none → 40d |  | constraint none → start no earlier than 2018-11-21; resources none → Nay La |
| 97 | AWS setup and manual | 2018-04-11 → 2019-01-02 (+266d) | 2018-04-11 → 2019-01-03 (+267d) | 4d → 2d | none → 1d |  | constraint none → start no earlier than 2019-01-02; resources none → Treza; William; Kaung Myat Bo |
| 98 | Release Project | 2018-04-11 → 2019-01-11 (+275d) | 2018-04-11 → 2019-01-11 (+275d) | 4d → 1d | none → 7d | none → 100 | resources none → Kaung Myat Bo |
| 99 | Prepare User Training | 2018-04-11 → 2019-01-04 (+268d) | 2018-04-11 → 2019-01-07 (+271d) | 4d → 2d | none → 1d | none → 97 | resources none → Treza; William; Bala; Kaung Myat Bo; Nay La |
| 100 | Training User | 2018-04-11 → 2019-01-08 (+272d) | 2018-04-11 → 2019-01-10 (+274d) | 4d → 3d | none → 1d | none → 99 | resources none → Kaung Myat Bo; William; Sponsor |
| 101 | Revised Documents and Sign-Off | 2018-04-11 → 2019-01-02 (+266d) | 2018-04-11 → 2019-01-03 (+267d) | 4d → 2d | none → 6d |  | constraint none → start no earlier than 2019-01-02; resources none → Bala; Nay La |

| ID | Task | Start | Finish | Duration | Total float | Predecessors | Other |
| --- | --- | --- | --- | --- | --- | --- | --- |
| 102 | Project Hand-over | 2018-04-11 → 2019-01-14 (+278d) | 2018-04-11 → 2019-01-16 (+280d) | 4d → 3d | none → 0d | none → 101, 100 | constraint none → start no earlier than 2019-01-14; resources none → Bala; Kaung Myat Bo; Nay La; Sponsor; Treza; William |
| 103 | **Incorporate Audit Feedbacks** | 2018-04-11 → 2019-01-17 (+281d) | 2018-04-11 → 2019-01-22 (+286d) | 0d → 4d | none → 0d |  |  |
| 104 | Revised on Audit Comment | 2018-04-11 → 2019-01-17 (+281d) | 2018-04-11 → 2019-01-18 (+282d) | 4d → 2d | none → 0d | none → 102 | resources none → Bala; Kaung Myat Bo; Treza; William; Nay La |
| 105 | Prepare for Presentation | 2018-04-11 → 2019-01-21 (+285d) | 2018-04-11 → 2019-01-22 (+286d) | 4d → 2d | none → 0d | none → 104 | resources none → Bala; Kaung Myat Bo; Nay La; Treza; William |

## Version 4 (saved 2018-04-17, file RAM.mpp)

Note of the change: finishing WBS

Last finish stays 2019-01-22.

Changed:

| ID | Task | Other |
| --- | --- | --- |
| 9 | Review/Finalize quality plan | resources Bala; Kaung Myat Bo; Nay La; Sponsor; Treza; William → Bala; Kaung Myat Bo; Nay La; Treza; William |
| 51 | Perform Integration Testing | was named Perform Integration Testing with PT07 |
| 100 | Training User | resources Kaung Myat Bo; William; Sponsor → Kaung Myat Bo; William; Sponsor; Treza |

## Version 5 (saved 2018-08-29, file projContTrackRAM.mpp)

Note of the change: Project Control Tracking

Last finish stays 2019-01-22. Complete tasks 0 → 33.

Changed:

| ID | Task | Start | Finish | Complete | Total float |
| --- | --- | --- | --- | --- | --- |
| 1 | **Project Initiation** | 2018-02-01 A | 2018-04-13 A | 0% → 100% | 164d → none |
| 2 | Setup project filing system | 2018-02-01 A | 2018-02-09 A | 0% → 100% | 242d → none |
| 3 | Project requirement gathering | 2018-02-01 A | 2018-02-28 A | 0% → 100% | 164d → none |
| 4 | Project risk tracker | 2018-03-01 A | 2018-03-07 A | 0% → 100% | 214d → none |
| 5 | Prepare WBS | 2018-03-01 A | 2018-03-07 A | 0% → 100% | 164d → none |
| 6 | Produce project plan document | 2018-03-20 A | 2018-03-28 A | 0% → 100% | 156d → none |
| 7 | Review/Finalize project plan document | 2018-03-29 A | 2018-03-30 A | 0% → 100% | 212d → none |
| 8 | Produce quality plan | 2018-02-12 A | 2018-02-16 A | 0% → 100% | 242d → none |
| 9 | Review/Finalize quality plan | 2018-03-08 A | 2018-03-08 A | 0% → 100% | 214d → none |
| 10 | Produce User requirement specification | 2018-03-09 A | 2018-03-22 A | 0% → 100% | 214d → none |
| 11 | Review/Finalize User requirement specification | 2018-03-23 A | 2018-03-26 A | 0% → 100% | 214d → none |
| 12 | Produce Use Case Modelling survey report | 2018-03-29 A | 2018-04-11 A | 0% → 100% | 156d → none |
| 13 | Review/Finalize Use Case Modelling survey report | 2018-04-12 A | 2018-04-13 A | 0% → 100% | 156d → none |
| 14 | Produce User Interface Speficication 1 | 2018-03-09 A | 2018-03-22 A | 0% → 100% | 218d → none |
| 15 | Review/Finalize User Interface Specification | 2018-03-27 A | 2018-03-28 A | 0% → 100% | 214d → none |
| 16 | Produce High Level Design Specification | 2018-03-01 A | 2018-03-15 A | 0% → 100% | 221d → none |
| 17 | Review/Finalize High Level Design Specification | 2018-03-16 A | 2018-03-19 A | 0% → 100% | 221d → none |
| 18 | Exploring AWS services | 2018-03-01 A | 2018-04-10 A | 0% → 100% | 205d → none |
| 19 | **Build Prototype** | 2018-04-16 A | 2018-04-26 A | 0% → 100% | 156d → none |
| 20 | Prepare prototype | 2018-04-16 A | 2018-04-20 A | 0% → 100% | 156d → none |
| 21 | Test prototype | 2018-04-23 A | 2018-04-24 A | 0% → 100% | 195d → none |
| 22 | Produce Prototype Study Report | 2018-04-23 A | 2018-04-24 A | 0% → 100% | 156d → none |
| 23 | Review/Finalize Prototype Study Report | 2018-04-25 A | 2018-04-26 A | 0% → 100% | 156d → none |
| 24 | **Incorporate Audit Feedbacks** | 2018-04-27 A | 2018-05-02 A | 0% → 100% | 156d → none |
| 25 | Revised on Audit Comments | 2018-04-27 A | 2018-04-27 A | 0% → 100% | 156d → none |
| 26 | Prepare for presentation | 2018-04-30 A | 2018-05-02 A | 0% → 100% | 156d → none |
| 27 | **Analysis and Design Modelling (Increment 1)** | 2018-05-03 A |  | 0% → 97% | 141d → 157d |
| 28 | Produce Use Case Model Survey Report (Requirement) | 2018-05-03 A | 2018-05-04 A | 0% → 100% | 185d → none |
| 29 | Review/FinaliseUse Case Model Survey Report (Requirement) | 2018-05-10 A | 2018-05-11 A | 0% → 100% | 182d → none |
| 30 | Identify Domain Objects/Attributes | 2018-05-03 A | 2018-05-09 A | 0% → 100% | 156d → none |
| 31 | Produce Class Diagrams | 2018-05-07 A | 2018-05-11 A | 0% → 100% | 154d → none |
| 32 | Produce Sequence Diagrams | 2018-05-14 A | 2018-06-08 A | 0% → 100% | 134d → none |
| 33 | Produce Design Model Report | 2018-06-11 A |  | 0% → 75% | 134d → 1.5d |
| 34 | Review/FinaliseDesign Model Report | 2018-06-14 A |  | 0% → 75% |  |
| 35 | **Implementation & Coding** | 2018-05-10 A |  | 0% → 97% |  |
| 36 | Setup necessary cloud environment | 2018-05-10 A |  | 0% → 75% |  |
| 37 | Source control plan and setup | 2018-06-11 A | 2018-06-13 A | 0% → 100% | 159d → none |
| 38 | Backend coding | 2018-06-18 A | 2018-07-13 A | 0% → 100% | 132d → none |
| 39 | Frontend coding | 2018-06-18 A | 2018-07-13 A | 0% → 100% | 132d → none |
| 40 | Unit testing | 2018-07-19 A |  | 0% → 75% |  |
| 41 | Peer review coding | 2018-07-16 A |  | 0% → 75% | 132d → 1.5d |
| 42 | **Testing** | 2018-06-18 A |  | 0% → 22% |  |
| 43 | Produce System Test Plan | 2018-06-18 A |  | 0% → 75% | 145d → 21d |
| 44 | Review/FinaliseSystem Test Plan | 2018-07-23 A |  | 0% → 50% | 125d → 0.75d |
| 45 | Perform System Testing | 2018-07-25 A |  | 0% → 25% | 125d → 0.5d |
| 46 | Bug Review/Corrective action/Rework | 2018-07-30 A |  | 0% → 25% |  |
| 47 | Prepare SIT Document | 2018-06-25 A |  | 0% → 25% | 139d → 22.5d |
| 48 | Review/FinaliseSIT Document | 2018-08-01 A |  | 0% → 25% | 117d → 0.75d |
| 49 | Prepare User Acceptance Test Plan | 2018-07-02 A |  | 0% → 25% | 138d → 25.5d |
| 50 | Review/FinaliseAcceptance Test Plan | 2018-08-13 A |  | 0% → 25% |  |
| 51 | Perform Integration Testing | 2018-08-03 A |  | 0% → 25% | 117d → 0.75d |
| 52 | Review Test Result and perform Corrective Action | 2018-08-08 A |  | 0% → 25% |  |
| 59 | **Revised Documentation for 2nd Audit** | 2018-08-28 A |  | 0% → 75% |  |
| 60 | Revised High Level Design Specification | 2018-08-28 A | 2018-08-28 A | 0% → 100% | 105d → none |
| 61 | Revised Project Plan | 2018-08-28 A |  | 0% → 50% |  |
| 62 | **Incorporate Audit Feedbacks** | 2018-08-28 A |  | 0% → 81% | 1d → 102d |
| 63 | Revised on Audit Comment | 2018-08-28 A |  | 0% → 25% |  |
| 64 | Prepare for Presentation | 2018-08-29 A | 2018-08-31 A | 0% → 100% |  |

## Version 6 (saved 2019-01-21, file Revamped Project Plan.mpp)

Note of the change: Revamped Project Plan (21-Jan-2019)

Last finish stays 2019-01-22. Complete tasks 33 → 55.

Changed:

| ID | Task | Start | Finish | Complete | Total float | Other |
| --- | --- | --- | --- | --- | --- | --- |
| 27 | **Analysis and Design Modelling (Increment 1)** |  | 2018-06-15 A | 97% → 100% | 157d → none |  |
| 33 | Produce Design Model Report |  | 2018-06-13 A | 75% → 100% | 1.5d → none |  |
| 34 | Review/FinaliseDesign Model Report |  | 2018-06-15 A | 75% → 100% | 157d → none |  |
| 35 | **Implementation & Coding** |  | 2018-07-20 A | 97% → 100% | 132d → none |  |
| 36 | Setup necessary cloud environment |  | 2018-05-11 A | 75% → 100% | 182d → none |  |
| 40 | Unit testing |  | 2018-07-20 A | 75% → 100% | 132d → none |  |
| 41 | Peer review coding |  | 2018-07-18 A | 75% → 100% | 1.5d → none |  |
| 42 | **Testing** |  |  | 22% → 67% |  |  |
| 43 | Produce System Test Plan |  | 2018-06-22 A | 75% → 100% | 21d → none |  |
| 44 | Review/FinaliseSystem Test Plan |  | 2018-07-24 A | 50% → 100% | 0.75d → none |  |
| 45 | Perform System Testing |  | 2018-07-27 A | 25% → 100% | 0.5d → none |  |
| 46 | Bug Review/Corrective action/Rework |  | 2018-07-31 A | 25% → 100% | 125d → none |  |
| 47 | Prepare SIT Document |  | 2018-06-29 A | 25% → 100% | 22.5d → none |  |
| 48 | Review/FinaliseSIT Document |  | 2018-08-02 A | 25% → 100% | 0.75d → none |  |
| 51 | Perform Integration Testing |  | 2018-08-07 A | 25% → 100% | 0.75d → none |  |
| 52 | Review Test Result and perform Corrective Action |  | 2018-08-10 A | 25% → 100% | 117d → none |  |
| 54 | Review/FinaliseUser Guide | 2018-08-16 A |  | 0% → 50% | 107d → 1.5d |  |
| 55 | Perform User Acceptance Testing | 2018-08-20 A |  | 0% → 50% | 107d → 1d |  |
| 56 | Review Acceptance Test Result/Corrective Action | 2018-08-23 A |  | 0% → 50% |  |  |
| 57 | Prepare User Acceptance Test Document | 2018-07-16 A |  | 0% → 50% | 25.25d → 25.5d |  |
| 58 | Review/FinaliseUser Acceptance Test Document | 2018-08-27 A |  | 0% → 50% | 0.25d → 106d |  |
| 59 | **Revised Documentation for 2nd Audit** |  | 2018-08-28 A | 75% → 100% | 105d → none |  |
| 61 | Revised Project Plan |  | 2018-08-28 A | 50% → 100% | 105d → none |  |
| 62 | **Incorporate Audit Feedbacks** |  | 2018-08-31 A | 81% → 100% | 102d → none |  |
| 63 | Revised on Audit Comment |  | 2018-08-28 A | 25% → 100% | 105d → none |  |
| 65 | **Analysis and Design Modelling (Increment 2)** | 2018-09-03 A | 2018-10-16 A | 0% → 100% | 45d → none |  |
| 66 | Produce Use Case Model Survey Report (Requirement) | 2018-09-03 A | 2018-09-04 A | 0% → 100% | 98d → none |  |
| 67 | Review/FinaliseUse Case Model Survey Report (Requirement) | 2018-09-10 A | 2018-09-11 A | 0% → 100% | 95d → none |  |
| 68 | Identify Domain Objects/Attributes | 2018-09-03 A | 2018-09-07 A | 0% → 100% | 97d → none |  |
| 69 | Produce Class Diagrams | 2018-09-05 A | 2018-09-11 A | 0% → 100% | 95d → none |  |
| 70 | Produce Sequence Diagrams | 2018-09-10 A | 2018-10-09 A | 0% → 100% | 40d → none |  |
| 71 | Produce Design Model Report | 2018-10-10 A | 2018-10-12 A | 0% → 100% | 40d → none |  |
| 72 | Review/FinaliseDesign Model Report | 2018-10-15 A | 2018-10-16 A | 0% → 100% | 40d → none |  |
| 73 | **Programming (Increment 2)** | 2018-10-17 A |  | 0% → 90% |  |  |
| 74 | Backend coding | 2018-10-17 A |  | 0% → 90% |  |  |
| 75 | Frontend coding | 2018-10-17 A |  | 0% → 90% | 40d → 2.7d |  |
| 76 | Unit Testing | 2018-11-26 A |  | 0% → 90% |  |  |
| 77 | Peer Review of Coding | 2018-11-21 A |  | 0% → 90% | 40d → 1.8d |  |
| 78 | **Testing (Increment 2)** | 2018-10-17 A |  | 0% → 61% |  |  |
| 79 | Produce System Test Plan | 2018-10-17 A |  | 0% → 80% | 58d → 26.6d |  |
| 80 | Review/FinaliseSystem Test Plan | 2018-11-28 A |  | 0% → 80% | 33d → 2.4d | resources Treza; Kaung Myat Bo; Bala; Nay La; William → Kaung Myat Bo; Bala; Nay La; William |
| 81 | Perform System Testing | 2018-11-30 A |  | 0% → 80% | 33d → 1.6d | resources Bala; Kaung Myat Bo; Nay La; Treza; William → Bala; Kaung Myat Bo; Nay La; William |
| 82 | Bug Review/Corrective action/Rework | 2018-12-05 A |  | 0% → 80% |  | resources Bala; Kaung Myat Bo; Nay La; Treza; William → Bala; Kaung Myat Bo; Nay La; William |
| 83 | Prepare SIT Document | 2018-10-24 A |  | 0% → 80% | 52d → 28.6d |  |
| 84 | Review/FinaliseSIT Document | 2018-12-07 A |  | 0% → 80% | 25d → 2.25d | resources Bala; Kaung Myat Bo; Nay La; Treza; William → Bala; Kaung Myat Bo; Nay La; William |
| 85 | Prepare User Acceptance Test Plan | 2018-10-31 A |  | 0% → 50% | 51d → 31.5d |  |
| 86 | Review/FinaliseAcceptance Test Plan | 2018-12-19 A |  | 0% → 75% | 21d → 6.5d | resources Bala; Kaung Myat Bo; Nay La; Treza; William → Bala; Kaung Myat Bo; Nay La; William |
| 87 | Perform Integration Testing with PT07 | 2018-12-11 A |  | 0% → 75% | 25d → 2.25d | resources Bala; Kaung Myat Bo; Nay La; Treza; William → Bala; Kaung Myat Bo; Nay La; William |
| 88 | Review Test Result and perform Corrective Action | 2018-12-14 A |  | 0% → 75% |  | resources Bala; Kaung Myat Bo; Nay La; Treza; William → Bala; Kaung Myat Bo; Nay La; William |
| 90 | Review/FinaliseUser Guide |  |  |  | 16d → 2.25d | resources Bala; Kaung Myat Bo; Nay La; Treza; William → Bala; Kaung Myat Bo; Nay La; William |
| 91 | Perform User Acceptance Testing | 2018-12-25 A |  | 0% → 75% | 16d → 1.5d | resources Bala; Kaung Myat Bo; Nay La; Sponsor; Treza; William → Bala; Kaung Myat Bo; Nay La; Sponsor; William |
| 92 | Review Acceptance Test Result/Corrective Action | 2018-12-28 A |  | 0% → 75% |  | resources Bala; Kaung Myat Bo; Nay La; Treza; William → Bala; Kaung Myat Bo; Nay La; William |
| 93 | Prepare User Acceptance Test Document | 2018-11-14 A |  | 0% → 50% | 44d → 29.5d |  |
| 94 | Review/FinaliseUser Acceptance Test Document | 2019-01-01 A |  | 0% → 50% |  | resources Bala; Kaung Myat Bo; Nay La; Treza; William → Bala; Kaung Myat Bo; Nay La; William |
| 95 | **Implementation** | 2018-11-21 A |  | 0% → 19% |  |  |
| 97 | AWS setup and manual |  |  |  |  | resources Treza; William; Kaung Myat Bo → William; Kaung Myat Bo |
| 99 | Prepare User Training | 2019-01-04 A |  | 0% → 50% | 1d → 1.5d | resources Treza; William; Bala; Kaung Myat Bo; Nay La → William; Bala; Kaung Myat Bo; Nay La |
| 100 | Training User | 2019-01-08 A |  | 0% → 50% |  | resources Kaung Myat Bo; William; Sponsor; Treza → Kaung Myat Bo; William; Sponsor |
| 101 | Revised Documents and Sign-Off | 2019-01-02 A |  | 0% → 50% |  |  |
| 102 | Project Hand-over |  |  |  |  | resources Bala; Kaung Myat Bo; Nay La; Sponsor; Treza; William → Bala; Kaung Myat Bo; Nay La; Sponsor; William |
| 104 | Revised on Audit Comment |  |  |  |  | resources Bala; Kaung Myat Bo; Treza; William; Nay La → Bala; Kaung Myat Bo; William; Nay La |
| 105 | Prepare for Presentation |  |  |  |  | resources Bala; Kaung Myat Bo; Nay La; Treza; William → Bala; Kaung Myat Bo; Nay La; William |

## Version 7 (saved 2019-01-27, file 1 Updated Project Plan.mpp)

Note of the change: Merge branch 'SE25PT7' of https://github.com/MrNayLA/SE25PT7SERIS into SE25PT7

Last finish stays 2019-01-22. Complete tasks 55 → 84.

Changed:

| ID | Task | Start | Finish | Complete | Total float |
| --- | --- | --- | --- | --- | --- |
| 42 | **Testing** |  | 2018-08-27 A | 67% → 100% | 106d → none |
| 49 | Prepare User Acceptance Test Plan |  | 2018-07-06 A | 25% → 100% | 25.5d → none |
| 50 | Review/FinaliseAcceptance Test Plan |  | 2018-08-14 A | 25% → 100% | 7d → none |
| 53 | End User Training Manual and Write User Guide | 2018-07-09 A | 2018-07-13 A | 0% → 100% | 24d → none |
| 54 | Review/FinaliseUser Guide |  | 2018-08-17 A | 50% → 100% | 1.5d → none |
| 55 | Perform User Acceptance Testing |  | 2018-08-22 A | 50% → 100% | 1d → none |
| 56 | Review Acceptance Test Result/Corrective Action |  | 2018-08-24 A | 50% → 100% | 107d → none |
| 57 | Prepare User Acceptance Test Document |  | 2018-07-20 A | 50% → 100% | 25.5d → none |
| 58 | Review/FinaliseUser Acceptance Test Document |  | 2018-08-27 A | 50% → 100% | 106d → none |
| 73 | **Programming (Increment 2)** |  | 2018-11-27 A | 90% → 100% | 40d → none |
| 74 | Backend coding |  | 2018-11-20 A | 90% → 100% | 45d → none |
| 75 | Frontend coding |  | 2018-11-20 A | 90% → 100% | 2.7d → none |
| 76 | Unit Testing |  | 2018-11-27 A | 90% → 100% | 40d → none |
| 77 | Peer Review of Coding |  | 2018-11-23 A | 90% → 100% | 1.8d → none |
| 78 | **Testing (Increment 2)** |  |  | 61% → 93% |  |
| 79 | Produce System Test Plan |  | 2018-10-23 A | 80% → 100% | 26.6d → none |
| 80 | Review/FinaliseSystem Test Plan |  | 2018-11-29 A | 80% → 100% | 2.4d → none |
| 81 | Perform System Testing |  | 2018-12-04 A | 80% → 100% | 1.6d → none |
| 82 | Bug Review/Corrective action/Rework |  | 2018-12-06 A | 80% → 100% | 33d → none |
| 83 | Prepare SIT Document |  | 2018-10-30 A | 80% → 100% | 28.6d → none |
| 84 | Review/FinaliseSIT Document |  | 2018-12-10 A | 80% → 100% | 2.25d → none |
| 85 | Prepare User Acceptance Test Plan |  | 2018-11-06 A | 50% → 100% | 31.5d → none |
| 86 | Review/FinaliseAcceptance Test Plan |  | 2018-12-20 A | 75% → 100% | 6.5d → none |
| 87 | Perform Integration Testing with PT07 |  | 2018-12-13 A | 75% → 100% | 2.25d → none |
| 88 | Review Test Result and perform Corrective Action |  | 2018-12-18 A | 75% → 100% | 25d → none |
| 89 | End User Training Manual and Write User Guide | 2018-11-07 A |  | 0% → 50% | 29.25d → 28d |
| 90 | Review/FinaliseUser Guide | 2018-12-21 A |  | 0% → 50% | 2.25d → 21d |
| 91 | Perform User Acceptance Testing |  | 2018-12-27 A | 75% → 100% | 1.5d → none |
| 92 | Review Acceptance Test Result/Corrective Action |  | 2018-12-31 A | 75% → 100% | 16d → none |
| 93 | Prepare User Acceptance Test Document |  | 2018-11-20 A | 50% → 100% | 29.5d → none |
| 94 | Review/FinaliseUser Acceptance Test Document |  | 2019-01-01 A | 50% → 100% | 15d → none |
| 95 | **Implementation** |  |  | 19% → 86% |  |
| 96 | Source Deployment Process Guide | 2018-11-21 A |  | 0% → 80% |  |
| 97 | AWS setup and manual | 2019-01-02 A |  | 0% → 90% | 1d → 13d |
| 98 | Release Project | 2019-01-11 A |  | 0% → 75% |  |
| 99 | Prepare User Training |  | 2019-01-07 A | 50% → 100% | 1.5d → none |
| 100 | Training User |  | 2019-01-10 A | 50% → 100% | 1d → none |
| 101 | Revised Documents and Sign-Off |  |  | 50% → 80% | 6d → 8.4d |
| 102 | Project Hand-over | 2019-01-14 A |  | 0% → 80% | 0d → 1.5d |
| 103 | **Incorporate Audit Feedbacks** | 2019-01-17 A |  | 0% → 88% |  |
| 104 | Revised on Audit Comment | 2019-01-17 A |  | 0% → 75% | 0d → 2d |
| 105 | Prepare for Presentation | 2019-01-21 A | 2019-01-22 A | 0% → 100% | 0d → none |
